# OJTFU_K2_DetailedPlan_Portlet_v0.3

Schedule from MS Project, 2012-05-07 to 2012-09-07.

## Calendars

- Standard: Mon-Fri 08:30-12:00, 13:00-17:30; Sat-Sun off.

## Resources

| Resource |
| --- |
| All team |
| DuyTK1 |
| DuyND2 |
| TuanLM3 |
| All team members |
| DuyND |
| VienBN |
| NhatVM |
| TrietNM |
| TrietTM |

## Schedule

| ID | WBS | Task | Duration | Start | Finish | Predecessors | Total slack | Free slack | Constraint | Resources | Work |
| --- | --- | --- | --- | --- | --- | --- | --- | --- | --- | --- | --- |
| 1 | 1 | **OOPMS** | 90d | 2012-05-07 | 2012-09-07 |  | 0d |  |  |  | 88h |
| 2 | 1.1 | **Initiation** | 1.5d | 2012-05-07 | 2012-05-08 |  | 0d |  |  |  |  |
| 3 | 1.1.1 | Add temp | 4h | 2012-05-07 | 2012-05-07 |  | 0d |  | start no earlier than 2012-05-07 |  |  |
| 4 | 1.1.2 | Kick-off meeting | 3h | 2012-05-07 | 2012-05-07 | 3 | 0d |  | start no earlier than 2012-03-12 |  |  |
| 5 | 1.1.3 | Introduce overview about Eclipse plug-in development | 2h | 2012-05-07 | 2012-05-08 | 4 | 0d |  |  |  |  |
| 6 | 1.1.4 | Introduce overview about Android development | 3h | 2012-05-08 | 2012-05-08 | 5 | 0d |  |  |  |  |
| 7 | 1.2 | **Planning** | 2.5d | 2012-05-08 | 2012-05-10 | 2 | 0d |  |  |  | 24h |
| 8 | 1.2.1 | Develop scope statement | 4h | 2012-05-08 | 2012-05-08 |  | 2d |  |  | All team members | 4h |
| 9 | 1.2.2 | Create WBS | 2d | 2012-05-08 | 2012-05-10 |  | 0d |  |  | DuyND | 16h |
| 10 | 1.2.3 | Develop and refine other plans | 4h | 2012-05-10 | 2012-05-10 | 9 | 0d |  |  | All team members | 4h |
| 11 | 1.3 | **Solution** | 14d | 2012-05-11 | 2012-05-30 | 7 | 0d |  |  |  |  |
| 12 | 1.3.1 | Report 1 | 3d | 2012-05-11 | 2012-05-15 | 7 | 0d |  |  |  |  |
| 13 | 1.3.2 | Study Requirements | 3d | 2012-05-16 | 2012-05-18 | 12 | 0d |  |  |  |  |
| 14 | 1.3.3 | **Develop functional specifications** | 2d | 2012-05-21 | 2012-05-22 |  | 0d |  |  |  |  |
| 15 | 1.3.3.1 | Create SRS | 2d | 2012-05-21 | 2012-05-22 | 13 | 0d |  | start no earlier than 2012-05-10 |  |  |
| 16 | 1.3.4 | **Develop prototype based on functional specifications** | 4d | 2012-05-23 | 2012-05-28 | 15 | 0d |  |  |  |  |
| 17 | 1.3.4.1 | ScreenDesign | 2d | 2012-05-23 | 2012-05-24 |  | 2d | 0d | finish no earlier than 2011-05-20 |  |  |
| 18 | 1.3.4.2 | Activity Diagram | 2d | 2012-05-25 | 2012-05-28 | 17 | 2d |  | start no earlier than 2011-05-20 |  |  |
| 19 | 1.3.4.3 | Sequence Diagram | 2d | 2012-05-23 | 2012-05-24 |  | 4d |  | start no earlier than 2011-05-20 |  |  |
| 20 | 1.3.4.4 | DDD | 4d | 2012-05-23 | 2012-05-28 |  | 0d |  | start no earlier than 2011-05-20 |  |  |
| 21 | 1.3.5 | Review functional specifications (Offline) | 1d | 2012-05-29 | 2012-05-29 | 20 | 0d |  | start no earlier than 2011-05-23 |  |  |
| 22 | 1.3.6 | Assess Understand the requirement | 1d | 2012-05-30 | 2012-05-30 | 21 | 0d |  |  |  |  |
| 23 | 1.4 | **Construction** | 66d | 2012-05-31 | 2012-08-30 | 11 | 0d |  |  |  | 64h |
| 24 | 1.4.1 | **Development** | 39d | 2012-05-31 | 2012-07-24 |  | 0d |  |  |  |  |
| 25 | 1.4.1.1 | Add temp | 4h | 2012-05-31 | 2012-05-31 | 11 | 0d |  |  |  |  |
| 26 | 1.4.1.2 | Add temp | 20d | 2012-05-31 | 2012-06-28 | 25 | 0d |  |  |  |  |
| 27 | 1.4.1.3 | Create coding plan | 4h | 2012-06-28 | 2012-06-28 | 26 | 0d |  |  |  |  |

| ID | WBS | Task | Duration | Start | Finish | Predecessors | Total slack | Constraint | Work |
| --- | --- | --- | --- | --- | --- | --- | --- | --- | --- |
| 28 | 1.4.1.4 | **Development** | 11d | 2012-06-29 | 2012-07-13 | 27 | 0d |  |  |
| 29 | 1.4.1.4.1 | Study In Android | 9d | 2012-06-29 | 2012-07-11 |  | 0d |  |  |
| 30 | 1.4.1.4.2 | **Screen design** | 9d | 2012-06-29 | 2012-07-11 |  | 0d |  |  |
| 31 | 1.4.1.4.2.1 | 2 Pages | 2d | 2012-06-29 | 2012-07-02 |  | 0d |  |  |
| 32 | 1.4.1.4.2.2 | 2 Pages | 2d | 2012-07-03 | 2012-07-04 | 31 | 0d |  |  |
| 33 | 1.4.1.4.2.3 | 2 Pages | 2d | 2012-07-05 | 2012-07-06 | 32 | 0d |  |  |
| 34 | 1.4.1.4.2.4 | 2 Pages | 2d | 2012-07-09 | 2012-07-10 | 33 | 0d |  |  |
| 35 | 1.4.1.4.2.5 | 2 Pages | 1d | 2012-07-11 | 2012-07-11 | 34 | 0d |  |  |
| 36 | 1.4.1.4.3 | Database Design | 5d | 2012-06-29 | 2012-07-05 |  | 0d |  |  |
| 37 | 1.4.1.4.4 | **Functions code** | 6d | 2012-07-06 | 2012-07-13 |  | 0d |  |  |
| 38 | 1.4.1.4.4.1 | Function 1 | 2d | 2012-07-06 | 2012-07-09 | 36 | 0d |  |  |
| 39 | 1.4.1.4.4.2 | Function 2 | 2d | 2012-07-10 | 2012-07-11 | 38 | 0d |  |  |
| 40 | 1.4.1.4.4.3 | Function 3 | 2d | 2012-07-12 | 2012-07-13 | 39 | 0d |  |  |
| 41 | 1.4.1.4.4.4 | Function 4 | 2d | 2012-07-06 | 2012-07-09 | 36 | 0d |  |  |
| 42 | 1.4.1.4.4.5 | Function 5 | 2d | 2012-07-10 | 2012-07-11 | 41 | 0d |  |  |
| 43 | 1.4.1.4.4.6 | Function 6 | 2d | 2012-07-12 | 2012-07-13 | 42 | 0d |  |  |
| 44 | 1.4.1.4.4.7 | Function 7 | 2d | 2012-07-12 | 2012-07-13 | 30 | 0d |  |  |
| 45 | 1.4.1.4.4.8 | Function 8 | 2d | 2012-07-12 | 2012-07-13 | 29 | 0d |  |  |
| 46 | 1.4.1.5 | Review code offline | 2d | 2012-07-16 | 2012-07-17 | 37 | 0d |  |  |
| 47 | 1.4.1.6 | Modify if needed | 2d | 2012-07-18 | 2012-07-19 | 46 | 0d |  |  |
| 48 | 1.4.1.7 | Integration | 3d | 2012-07-20 | 2012-07-24 | 47 | 0d |  |  |
| 49 | 1.4.2 | **Testing** | 27d | 2012-07-25 | 2012-08-30 | 48 | 0d |  | 64h |
| 50 | 1.4.2.1 | Add temp | 4h | 2012-07-25 | 2012-07-25 | 37 | 0d |  |  |
| 51 | 1.4.2.2 | Add temp | 10d | 2012-07-25 | 2012-08-08 | 50 | 0d |  |  |
| 52 | 1.4.2.3 | Create Testing plan | 4h | 2012-08-08 | 2012-08-08 | 51 | 0d | start no earlier than 2011-05-30 |  |

| ID | WBS | Task | Duration | Start | Finish | Predecessors | Total slack | Constraint | Resources | Work |
| --- | --- | --- | --- | --- | --- | --- | --- | --- | --- | --- |
| 53 | 1.4.2.4 | **Unit Testing** | 8d | 2012-08-09 | 2012-08-20 |  | 0d |  |  | 64h |
| 54 | 1.4.2.4.1 | Create Test case | 1d | 2012-08-09 | 2012-08-09 | 52 | 0d |  |  | 8h |
| 55 | 1.4.2.4.2 | Review test case online | 4h | 2012-08-10 | 2012-08-10 | 54 | 0d |  |  | 4h |
| 56 | 1.4.2.4.3 | Create Test code | 2d | 2012-08-10 | 2012-08-14 | 55 | 0d |  |  | 16h |
| 57 | 1.4.2.4.4 | Review Test code and Unit Test Statistical Report | 4h | 2012-08-14 | 2012-08-14 | 56 | 0d |  |  | 4h |
| 58 | 1.4.2.4.5 | Modify code (fix bug, if any) | 2d | 2012-08-15 | 2012-08-16 | 57 | 0d |  |  | 16h |
| 59 | 1.4.2.4.6 | Re-test modified code | 1d | 2012-08-17 | 2012-08-17 | 58 | 0d |  |  | 8h |
| 60 | 1.4.2.4.7 | Assess Unit Testing (Write Test Case, Test Code, Test Report) | 1d | 2012-08-20 | 2012-08-20 | 59 | 0d |  |  | 8h |
| 61 | 1.4.2.5 | **Integration Testing** | 8d | 2012-08-21 | 2012-08-30 |  | 0d |  |  |  |
| 62 | 1.4.2.5.1 | Create Test case | 1d | 2012-08-21 | 2012-08-21 | 48, 60 | 0d |  |  |  |
| 63 | 1.4.2.5.2 | Review test case online | 4h | 2012-08-22 | 2012-08-22 | 62 | 0d |  |  |  |
| 64 | 1.4.2.5.3 | Create Test code | 2d | 2012-08-22 | 2012-08-24 | 63 | 0d |  |  |  |
| 65 | 1.4.2.5.4 | Review Test code and Unit Test Statistical Report | 4h | 2012-08-24 | 2012-08-24 | 64 | 0d |  |  |  |
| 66 | 1.4.2.5.5 | Modify code (fix bug, if any) | 2d | 2012-08-27 | 2012-08-28 | 65 | 0d |  |  |  |
| 67 | 1.4.2.5.6 | Re-test modified code | 1d | 2012-08-29 | 2012-08-29 | 66 | 0d |  |  |  |
| 68 | 1.4.2.5.7 | Assess Unit Testing (Write Test Case, Test Code, Test Report) | 1d | 2012-08-30 | 2012-08-30 | 67 | 0d |  |  |  |
| 69 | 1.5 | Monitoring and Controlling | 48d | 2012-05-11 | 2012-07-17 | 7 | 38d | start no earlier than 2012-03-16 |  |  |
| 70 | 1.6 | **Termination** | 6d | 2012-08-31 | 2012-09-07 | 23 | 0d |  |  |  |
| 71 | 1.6.1 | Milestone assessment | 3d | 2012-08-31 | 2012-09-04 |  | 0d |  | All team members |  |
| 72 | 1.6.2 | Deployment | 3d | 2012-09-05 | 2012-09-07 | 71 | 0d |  |  |  |
