# OJTFU_K2_DetailedPlan_Portlet_v0.3

Schedule from MS Project, 2012-05-07 to 2012-08-21, A marks actual dates.

## Calendars

- Standard: Mon-Fri 08:30-12:00, 13:00-17:30; Sat-Sun off.

## Resources

| Resource |
| --- |
| All team |
| DuyTK1 |
| DuyND2 |
| TuanLM3 |
| All team members |
| DuyND |
| VienBN |
| NhatVM |
| TrietNM |
| TrietTM |
| GiangPNT |
| TruongMD |
| TruongMH |
| HaiTCT |

## Schedule

| ID | WBS | Task | Duration | Start | Finish | Predecessors | Complete | Remaining | Total slack | Free slack | Constraint | Resources | Work | Actual work |
| --- | --- | --- | --- | --- | --- | --- | --- | --- | --- | --- | --- | --- | --- | --- |
| 1 | 1 | **OOPMS** | 76.85d | 2012-05-07 A | 2012-08-21 |  | 48% | 40.15d | 0d |  |  |  | 1450.8h | 660.89h |
| 2 | 1.1 | **Initiation** | 2d | 2012-05-07 A | 2012-05-08 A |  | 100% |  |  |  |  | All team members | 16h | 16h |
| 3 | 1.1.1 | Kick-off meeting | 1d | 2012-05-07 A | 2012-05-07 A |  | 100% |  |  |  | start no earlier than 2012-05-07 |  |  |  |
| 4 | 1.1.2 | Introduce overview about Eclipse plug-in development | 4h | 2012-05-08 A | 2012-05-08 A | 3 | 100% |  |  |  |  |  |  |  |
| 5 | 1.1.3 | Introduce overview about Android development | 4h | 2012-05-08 A | 2012-05-08 A | 4 | 100% |  |  |  |  |  |  |  |
| 6 | 1.2 | **Planning** | 5d | 2012-05-09 A | 2012-05-15 A | 2 | 100% |  |  |  |  |  | 56h | 56h |
| 7 | 1.2.1 | Develop scope statement | 3d | 2012-05-09 A | 2012-05-11 A |  | 100% |  |  |  |  | All team members | 24h | 24h |
| 8 | 1.2.2 | Create WBS | 2d | 2012-05-09 A | 2012-05-10 A |  | 100% |  |  |  |  | DuyND | 16h | 16h |
| 9 | 1.2.3 | Develop and refine other plans | 2d | 2012-05-14 A | 2012-05-15 A | 7 | 100% |  |  |  |  | All team members | 16h | 16h |
| 10 | 1.3 | **Solution** | 28d | 2012-05-16 A | 2012-06-22 |  | 92% | 2.25d | 9d | 0d |  |  | 224h | 206h |
| 11 | 1.3.1 | Report 1 | 4d | 2012-05-16 A | 2012-05-21 A | 6 | 100% |  |  |  |  | All team members | 32h | 32h |
| 12 | 1.3.2 | Study Requirements + Report 2 | 4d | 2012-05-22 A | 2012-05-25 A | 11 | 100% |  |  |  |  | All team members | 32h | 32h |
| 13 | 1.3.3 | **Develop functional specifications** | 5d | 2012-05-28 A | 2012-06-01 |  | 90% | 0.5d | 22.25d |  |  |  | 40h | 36h |
| 14 | 1.3.3.1 | Create SRS | 5d | 2012-05-28 A | 2012-06-01 | 12 | 90% | 0.5d | 22.25d | 0d | start no earlier than 2012-05-10 | All team members | 40h | 36h |
| 15 | 1.3.4 | **Develop prototype based on functional specifications** | 13d | 2012-06-04 A | 2012-06-20 | 14 | 87% | 1.75d | 11d |  |  |  | 104h | 90h |
| 16 | 1.3.4.1 | Database Design | 5d | 2012-06-04 A | 2012-06-08 |  | 85% | 0.75d | 18d | 0d |  | All team members | 40h | 34h |
| 17 | 1.3.4.2 | ScreenDesign | 2d | 2012-06-11 A | 2012-06-12 | 16 | 85% | 0.3d | 16.3d | 0d | finish no earlier than 2011-05-20 | All team members | 16h | 13.6h |
| 18 | 1.3.4.3 | Activity Diagram | 2d | 2012-06-13 A | 2012-06-14 | 17 | 90% | 0.2d | 14.5d | 0d | start no earlier than 2011-05-20 | All team members | 16h | 14.4h |
| 19 | 1.3.4.4 | Sequence Diagram | 2d | 2012-06-15 A | 2012-06-18 | 18 | 90% | 0.2d | 12.7d | 0d | start no earlier than 2011-05-20 | All team members | 16h | 14.4h |
| 20 | 1.3.4.5 | DDD | 2d | 2012-06-19 A | 2012-06-20 | 19 | 85% | 0.3d | 11d |  | start no earlier than 2011-05-20 | All team members | 16h | 13.6h |
| 21 | 1.3.5 | Review functional specifications (Offline) | 1d | 2012-06-21 A | 2012-06-21 A | 20 | 100% |  |  |  | start no earlier than 2011-05-23 | All team members | 8h | 8h |
| 22 | 1.3.6 | Assess Understand the requirement | 1d | 2012-06-22 A | 2012-06-22 A | 21 | 100% |  |  |  |  | All team members | 8h | 8h |
| 23 | 1.4 | **Construction** | 36.85d | 2012-06-25 A | 2012-08-14 | 10 | 24% | 27.85d | 0d |  |  |  | 610.8h | 130.89h |
| 24 | 1.4.1 | **Development** | 25.5d | 2012-06-25 A | 2012-07-30 |  | 29% | 18.09d | 11.35d |  |  |  | 448h | 129.6h |
| 25 | 1.4.1.1 | Create coding plan | 4h | 2012-06-25 A | 2012-06-25 A |  | 100% |  |  |  |  |  |  |  |

| ID | WBS | Task | Duration | Start | Finish | Predecessors | Complete | Remaining | Total slack | Free slack | Resources | Work | Actual work |
| --- | --- | --- | --- | --- | --- | --- | --- | --- | --- | --- | --- | --- | --- |
| 26 | 1.4.1.2 | **Development** | 16d | 2012-06-25 A | 2012-07-17 | 25 | 34% | 10.6d | 20.35d |  |  | 384h | 129.6h |
| 27 | 1.4.1.2.1 | **Screen design** | 5d | 2012-06-25 | 2012-07-02 |  |  |  | 31.35d |  |  | 112h |  |
| 28 | 1.4.1.2.1.1 | Pages (Requirement, Portal) | 3d | 2012-06-25 | 2012-06-28 |  |  |  | 33.35d |  | DuyND | 24h |  |
| 29 | 1.4.1.2.1.2 | Pages (DMS, Timesheet) | 3d | 2012-06-25 | 2012-06-28 |  |  |  | 33.35d |  | TruongMH | 24h |  |
| 30 | 1.4.1.2.1.3 | Pages (Project Eyes, Admin, Product) | 3d | 2012-06-25 | 2012-06-28 |  |  |  | 33.35d |  | HaiTCT | 24h |  |
| 31 | 1.4.1.2.1.4 | Pages (Report, Dashboard, Planner) | 3d | 2012-06-25 | 2012-06-28 |  |  |  | 31.35d | 0d | GiangPNT | 24h |  |
| 32 | 1.4.1.2.1.5 | Review Pages | 2d | 2012-06-28 | 2012-07-02 | 31 |  |  | 31.35d |  | All team members | 16h |  |
| 33 | 1.4.1.2.2 | Database Design, Pages review, mapping | 2d | 2012-07-02 A | 2012-07-04 A | 32 | 100% |  |  |  | All team members | 16h | 16h |
| 34 | 1.4.1.2.3 | **Functions code** | 9d | 2012-07-04 A | 2012-07-17 | 33 | 44% | 5.01d | 20.35d |  |  | 256h | 113.6h |
| 35 | 1.4.1.2.3.1 | Function 1 Requirement | 3d | 2012-07-04 A | 2012-07-09 |  | 70% | 0.9d | 3.4d | 0d | DuyND | 24h | 16.8h |
| 36 | 1.4.1.2.3.2 | Function 2 DMS | 3d | 2012-07-04 A | 2012-07-09 |  | 30% | 2.1d | 25.15d | 0d | TruongMH | 24h | 7.2h |
| 37 | 1.4.1.2.3.3 | Function 3 Admin | 3d | 2012-07-04 | 2012-07-09 |  |  |  | 24.35d | 0d | HaiTCT | 24h |  |
| 38 | 1.4.1.2.3.4 | Function 4 Dashboard | 3d | 2012-07-04 | 2012-07-09 |  |  |  | 24.35d | 0d | GiangPNT | 24h |  |
| 39 | 1.4.1.2.3.5 | Function 5 Portal | 4d | 2012-07-09 A | 2012-07-13 | 35 | 70% | 1.2d | 0.6d | 0d | DuyND | 32h | 22.4h |
| 40 | 1.4.1.2.3.6 | Function 6 Timesheet | 4d | 2012-07-09 A | 2012-07-13 | 36 | 70% | 1.2d | 22.35d |  | TruongMH | 32h | 22.4h |
| 41 | 1.4.1.2.3.7 | Function 7 Admin, Product | 4d | 2012-07-09 A | 2012-07-13 | 37 | 50% | 2d | 22.35d |  | HaiTCT | 32h | 16h |
| 42 | 1.4.1.2.3.8 | Function 8 Planner, Report | 4d | 2012-07-09 A | 2012-07-13 | 38 | 50% | 2d | 22.35d |  | GiangPNT | 32h | 16h |
| 43 | 1.4.1.2.3.9 | Function 9 Dashboard, Project Eye | 2d | 2012-07-13 A | 2012-07-17 | 39 | 50% | 1d | 20.35d |  | All team members | 16h | 8h |
| 44 | 1.4.1.2.3.10 | Function 10 Receipt | 2d | 2012-07-13 A | 2012-07-17 | 39 | 30% | 1.4d | 0d |  | All team members | 16h | 4.8h |
| 45 | 1.4.1.3 | Review code offline | 1d | 2012-07-17 | 2012-07-18 | 44 |  |  | 0d |  | All team members | 8h |  |
| 46 | 1.4.1.4 | Review to update/fix bug for final documents | 1d | 2012-07-18 | 2012-07-19 | 45 |  |  | 0d |  |  |  |  |
| 47 | 1.4.1.5 | Modify if needed | 1d | 2012-07-19 | 2012-07-20 | 46 |  |  | 0d |  | All team members | 8h |  |
| 48 | 1.4.1.6 | Integration | 2d | 2012-07-20 | 2012-07-24 | 47 |  |  | 0d |  | All team members | 16h |  |
| 49 | 1.4.1.7 | Study and develop Android Version | 4d | 2012-07-24 | 2012-07-30 | 48 |  |  | 0d |  | All team members | 32h |  |

| ID | WBS | Task | Duration | Start | Finish | Predecessors | Complete | Remaining | Total slack | Constraint | Resources | Work | Actual work |
| --- | --- | --- | --- | --- | --- | --- | --- | --- | --- | --- | --- | --- | --- |
| 50 | 1.4.2 | **Testing** | 12.35d | 2012-07-27 A | 2012-08-14 | 49 | 1% | 12.19d | 0d |  | All team members | 162.8h | 1.29h |
| 51 | 1.4.2.1 | Create Testing plan + Document | 4h | 2012-07-27 A | 2012-07-30 |  | 30% | 2.8h | 0d | start no earlier than 2011-05-30 |  |  |  |
| 52 | 1.4.2.2 | **Unit Testing** | 5.5d | 2012-07-30 | 2012-08-07 |  |  |  | 0d |  |  | 64h |  |
| 53 | 1.4.2.2.1 | Create Test case | 1d | 2012-07-30 | 2012-07-31 | 51 |  |  | 0d |  |  | 8h |  |
| 54 | 1.4.2.2.2 | Review test case online | 1d | 2012-07-31 | 2012-08-01 | 53 |  |  | 0d |  |  | 4h |  |
| 55 | 1.4.2.2.3 | Create Test code | 1d | 2012-08-01 | 2012-08-02 | 54 |  |  | 0d |  |  | 16h |  |
| 56 | 1.4.2.2.4 | Review Test code and Unit Test Statistical Report | 4h | 2012-08-02 | 2012-08-03 | 55 |  |  | 0d |  |  | 4h |  |
| 57 | 1.4.2.2.5 | Modify code (fix bug, if any) | 1d | 2012-08-03 | 2012-08-06 | 56 |  |  | 0d |  |  | 16h |  |
| 58 | 1.4.2.2.6 | Re-test modified code | 4h | 2012-08-06 | 2012-08-06 | 57 |  |  | 0d |  |  | 8h |  |
| 59 | 1.4.2.2.7 | Assess Unit Testing (Write Test Case, Test Code, Test Report) | 4h | 2012-08-06 | 2012-08-07 | 58 |  |  | 0d |  |  | 8h |  |
| 60 | 1.4.2.3 | **Integration Testing** | 5.5d | 2012-08-07 | 2012-08-14 |  |  |  | 0d |  |  |  |  |
| 61 | 1.4.2.3.1 | Create Test case | 1d | 2012-08-07 | 2012-08-08 | 48, 59 |  |  | 0d |  |  |  |  |
| 62 | 1.4.2.3.2 | Review test case online | 1d | 2012-08-08 | 2012-08-09 | 61 |  |  | 0d |  |  |  |  |
| 63 | 1.4.2.3.3 | Create Test code | 1d | 2012-08-09 | 2012-08-10 | 62 |  |  | 0d |  |  |  |  |
| 64 | 1.4.2.3.4 | Review Test code and Unit Test Statistical Report | 4h | 2012-08-10 | 2012-08-10 | 63 |  |  | 0d |  |  |  |  |
| 65 | 1.4.2.3.5 | Modify code (fix bug, if any) | 1d | 2012-08-10 | 2012-08-13 | 64 |  |  | 0d |  |  |  |  |
| 66 | 1.4.2.3.6 | Re-test modified code | 4h | 2012-08-13 | 2012-08-14 | 65 |  |  | 0d |  |  |  |  |
| 67 | 1.4.2.3.7 | Assess Unit Testing (Write Test Case, Test Code, Test Report) | 4h | 2012-08-14 | 2012-08-14 | 66 |  |  | 0d |  |  |  |  |
| 68 | 1.5 | Monitoring and Controlling | 63d | 2012-05-16 A | 2012-08-10 | 6 | 50% | 31.5d | 6.85d | start no earlier than 2012-03-16 | DuyND | 504h | 252h |
| 69 | 1.6 | **Termination** | 5d | 2012-08-14 | 2012-08-21 | 23 |  |  | 0d |  | All team members | 40h |  |
| 70 | 1.6.1 | Milestone assessment | 2d | 2012-08-14 | 2012-08-16 |  |  |  | 0d |  | All team members |  |  |
| 71 | 1.6.2 | Deployment | 3d | 2012-08-16 | 2012-08-21 | 70 |  |  | 0d |  |  |  |  |
