Schedule from MS Project, 2012-01-03 to 2012-04-23.

## Calendars

- Standard: Mon-Fri 08:00-12:00, 13:00-17:00; Sat-Sun off. Exceptions (off unless hours are given): 2012-01-07 08:00-24:00 (Day), 2012-01-16 to 2012-01-20 (Day), 2012-01-23 to 2012-01-27 (Day), 2012-02-04 08:00-24:00 (Day), 2012-02-11 08:00-24:00 (Day), 2012-02-18 08:00-24:00 (Day), 2012-02-25 08:00-24:00 (Day), 2012-03-03 08:00-24:00 (Day), 2012-03-10 08:00-24:00 (Day), 2012-03-17 08:00-24:00 (Day), 2012-03-24 08:00-24:00 (Day), 2012-03-31 08:00-24:00 (Day), 2012-04-07 08:00-24:00 (Day), 2012-04-14 08:00-24:00 (Day), 2012-04-21 08:00-24:00 (Day).

## Resources

| Resource |
| --- |
| GiangLP |
| QuanTH |
| HaiNh |
| HungNQ |

## Schedule

| ID | WBS | Task | Type | Duration | Start | Finish | Predecessors | Total slack | Constraint | Resources | Work |
| --- | --- | --- | --- | --- | --- | --- | --- | --- | --- | --- | --- |
| 1 | 1 | **Teacher Left Hand System** |  | 95.5d | 2012-01-03 | 2012-04-23 |  | 0d |  |  | 2171.44h |
| 2 | 2 | **Initiating** |  | 0.38d | 2012-01-06 | 2012-01-06 |  | 0d |  |  | 12h |
| 3 | 2.1 | Project Kick-off meeting | manual | 3h | 2012-01-06 | 2012-01-06 |  |  | start no earlier than 2012-01-06 | GiangLP; HaiNh; HungNQ; QuanTH | 12h |
| 4 | 3 | **Planning** |  | 12d | 2012-01-03 | 2012-01-31 |  | 0d |  |  | 36h |
| 5 | 3.1 | Prepare Project Introduction | manual | 0.62d | 2012-01-03 | 2012-01-03 |  |  | start no earlier than 2012-01-03 | GiangLP; HaiNh; HungNQ; QuanTH | 20h |
| 6 | 3.2 | Develop Software Project Management Plan | manual | 1.25d | 2012-01-04 | 2012-01-05 |  |  | start no earlier than 2012-01-04 | GiangLP | 10h |
| 7 | 3.3 | Review Project plan | manual | 2h | 2012-01-06 | 2012-01-06 | 6 |  | finish no earlier than 2012-01-06 | HaiNh [10%]; HungNQ; QuanTH [10%] | 6h |
| 8 | 3.4 | Submit Project Introduction Documents | milestone, manual | 0d | 2012-01-09 | 2012-01-09 |  |  | start no earlier than 2012-01-09 | GiangLP; HaiNh; HungNQ; QuanTH |  |
| 9 | 3.5 | Submit Project Plan | milestone, manual | 0d | 2012-01-31 | 2012-01-31 |  |  | start no earlier than 2012-01-31 | GiangLP; HaiNh; HungNQ; QuanTH |  |
| 10 | 4 | **Executing** |  | 88d | 2012-01-10 | 2012-04-23 |  | 0d |  |  | 2051.44h |
| 11 | 4.1 | **Analysis** |  | 12d | 2012-01-10 | 2012-02-07 |  | 0d |  |  | 132h |
| 12 | 4.1.1 | Create SRS | manual | 1.5w | 2012-01-10 | 2012-02-02 |  |  | start no earlier than 2012-01-10 | QuanTH; HaiNh; HungNQ | 128h |
| 13 | 4.1.2 | Review SRS | manual | 4h | 2012-02-02 | 2012-02-02 | 12 |  |  | GiangLP | 4h |
| 14 | 4.1.3 | Submit SRS | milestone, manual | 0d | 2012-02-07 | 2012-02-07 |  |  | start no earlier than 2012-02-07 | GiangLP; HaiNh; HungNQ; QuanTH |  |
| 15 | 4.2 | **Design** |  | 17d | 2012-02-03 | 2012-02-20 |  | 0d |  |  | 92.24h |
| 16 | 4.2.1 | Architecture Design | manual | 2d | 2012-02-03 | 2012-02-04 | 13 |  |  | GiangLP [40%]; HungNQ [40%] | 12.8h |
| 17 | 4.2.2 | Database Design | manual | 2d | 2012-02-03 | 2012-02-04 | 13 |  | start no earlier than 2012-02-03 | HaiNh [80%] | 12.8h |
| 18 | 4.2.3 | UI Design | manual | 2d | 2012-02-03 | 2012-02-04 | 17SS |  | start no earlier than 2012-01-05 | QuanTH [80%] | 12.8h |
| 19 | 4.2.4 | Package and mechanism design | manual | 2d | 2012-02-03 | 2012-02-04 | 16SS |  |  | GiangLP [40%]; HungNQ [40%] | 12.8h |
| 20 | 4.2.5 | Create Software Detail Description | manual | 1.5w | 2012-02-06 | 2012-02-13 | 16SS+1d, 19FF+1d |  |  | GiangLP [20%]; QuanTH [20%]; HungNQ [20%]; HaiNh [20%] | 33.04h |
| 21 | 4.2.6 | Review DD | manual | 1d | 2012-02-13 | 2012-02-13 | 20 |  |  | GiangLP | 8h |
| 22 | 4.2.7 | Submit DD | milestone, manual | 0d | 2012-02-20 | 2012-02-20 | 21 |  | start no earlier than 2012-02-20 | GiangLP; HaiNh; HungNQ; QuanTH |  |
| 23 | 4.3 | **Implementation** |  | 42d | 2012-02-06 | 2012-03-18 |  | 0d |  |  | 1291.2h |
| 24 | 4.3.2 | Implement database | manual | 4h | 2012-02-06 | 2012-02-06 | 17 |  |  | HaiNh [80%] | 3.2h |
| 25 | 4.3.3 | Sample data input | manual | 1d | 2012-02-07 | 2012-02-07 | 24 |  |  | HaiNh [80%] | 8h |
| 26 | 4.3.4 | coding (code and fix bug) | manual | 8w | 2012-02-08 | 2012-03-18 | 21 |  |  | GiangLP; HaiNh; HungNQ; QuanTH | 1280h |

| ID | WBS | Task | Type | Duration | Start | Finish | Predecessors | Total slack | Constraint | Resources | Work |
| --- | --- | --- | --- | --- | --- | --- | --- | --- | --- | --- | --- |
| 27 | 4.4 | **Testing** |  | 43d | 2012-02-09 | 2012-03-22 |  | 0d |  |  | 356h |
| 28 | 4.4.1 | Create software Test plan | manual | 1d | 2012-02-09 | 2012-02-09 | 20 |  | start no earlier than 2012-02-09 | GiangLP; QuanTH | 16h |
| 29 | 1.3.4.2 | Review Test plan |  | 2h | 2012-02-10 | 2012-02-10 | 28 | 74.25d |  | GiangLP; HaiNh | 4h |
| 30 | 4.4.4 | Create Software Test Document | manual | 2d | 2012-03-14 | 2012-03-15 | 31, 32FF+1d |  | start no earlier than 2012-03-14 | GiangLP; QuanTH; HaiNh; HungNQ | 64h |
| 31 | 4.4.2 | Execute IT | manual | 4d | 2012-03-14 | 2012-03-17 | 26FF |  |  | GiangLP; HaiNh; HungNQ; QuanTH | 128h |
| 32 | 4.4.3 | Execute ST | manual | 4d | 2012-03-19 | 2012-03-22 | 31 |  |  | GiangLP; HaiNh; HungNQ; QuanTH | 128h |
| 33 | 4.4.5 | Review STD | manual | 4h | 2012-03-16 | 2012-03-16 | 30 |  |  | GiangLP; HaiNh; HungNQ; QuanTH | 16h |
| 34 | 4.4.6 | Submit STD | milestone, manual | 0d | 2012-03-19 | 2012-03-19 |  |  | start no earlier than 2012-03-19 | GiangLP; HaiNh; HungNQ; QuanTH |  |
| 35 | 4.5 | **Final release** |  | 34.5d | 2012-03-20 | 2012-04-23 |  | 0d |  |  | 180h |
| 36 | 4.5.1 | Create Software Installation package | manual | 4d | 2012-03-20 | 2012-03-23 | 33 |  |  | GiangLP; HaiNh; HungNQ; QuanTH | 128h |
| 37 | 4.5.2 | Create User manual Guide | manual | 2d | 2012-03-20 | 2012-03-21 | 36SS+3d |  |  | HaiNh; QuanTH; HungNQ | 48h |
| 38 | 4.5.3 | Review User Manual Guide | manual | 4h | 2012-04-23 | 2012-04-23 | 37 |  |  | GiangLP | 4h |
| 39 | 4.5.4 | Submit Installation package and document | milestone, manual | 0d | 2012-04-21 | 2012-04-21 |  |  | start no earlier than 2012-04-21 | GiangLP; HaiNh; HungNQ; QuanTH |  |
| 40 | 5 | **Closing** |  | 2.25d | 2012-04-21 | 2012-04-23 |  | 0d |  |  | 72h |
| 41 | 5.1 | Prepare project presentation | manual | 2d | 2012-04-21 | 2012-04-22 | 39 |  |  | GiangLP; HaiNh; HungNQ; QuanTH | 64h |
| 42 | 5.2 | Final Capstone project Presentation | manual | 2h | 2012-04-23 | 2012-04-23 | 41 |  | start no earlier than 2012-04-23 | GiangLP; HaiNh; HungNQ; QuanTH | 8h |
